# TimelineXpress_Overall_Schedule

Schedule from ProjectLibre, 2025-01-30 to 2025-05-08.

## Calendars

- Standard: Mon-Fri 08:00-12:00, 13:00-17:00; Sat-Sun off.

## Resources

| Resource | Rate |
| --- | --- |
| Unassigned |  |
| Walter Ulicki | 100 |
| Gitti Esmailzada | 100 |
| Dana Tryon | 100 |
| Alexandra Lawler | 100 |

## Schedule

| ID | WBS | Task | Duration | Start | Finish | Predecessors | Baseline start | Baseline finish | Constraint |
| --- | --- | --- | --- | --- | --- | --- | --- | --- | --- |
| 1 | 1 | **Phase 1: Identify Problem, Obtain Approval** | 5d | 2025-01-30 | 2025-02-06 |  | 2025-01-30 | 2025-02-06 | start no earlier than 2025-01-30 |
| 2 | 1.1 | Creat Project Proposal Slides | 5d | 2025-01-30 | 2025-02-06 |  | 2025-01-30 | 2025-02-06 |  |
| 3 | 1.2 | PROJECT PROPOSAL DUE | 0d | 2025-02-06 | 2025-02-06 | 2 | 2025-02-06 | 2025-02-06 |  |
| 4 | 2 | **Phase 2: Plan and Monitor** | 10d | 2025-02-06 | 2025-02-20 | 1 | 2025-02-06 | 2025-02-20 |  |
| 5 | 2.1 | Write Project Plan document | 8d | 2025-02-06 | 2025-02-18 |  | 2025-02-06 | 2025-02-18 |  |
| 6 | 2.2 | Create System Context Diag | 2d | 2025-02-06 | 2025-02-10 | 5SS | 2025-02-06 | 2025-02-10 |  |
| 7 | 2.3 | Create Main Schedule | 4d | 2025-02-10 | 2025-02-14 | 6 | 2025-02-10 | 2025-02-14 |  |
| 8 | 2.4 | PROJECT PLAN DOCUMENT DUE | 0d | 2025-02-20 | 2025-02-20 | 5 | 2025-02-20 | 2025-02-20 | start no earlier than 2025-02-20 |
| 9 | 3 | **Phase 3: Analysis & Discovery** | 4d | 2025-02-20 | 2025-02-26 | 4 | 2025-02-20 | 2025-02-26 |  |
| 10 | 3.1 | Analyze Database needs | 4d | 2025-02-20 | 2025-02-26 |  | 2025-02-20 | 2025-02-26 |  |
| 11 | 3.2 | Analyze Graphics needs | 4d | 2025-02-20 | 2025-02-26 | 10SS | 2025-02-20 | 2025-02-26 |  |
| 12 | 4 | **Iteration 1: Develop Database** | 15d | 2025-02-26 | 2025-03-19 | 9 | 2025-02-26 | 2025-03-19 |  |
| 13 | 4.1 | Planning Tasks | 1d | 2025-02-26 | 2025-02-27 |  | 2025-02-26 | 2025-02-27 |  |
| 14 | 4.2 | Analysis Tasks | 5d | 2025-02-26 | 2025-03-05 |  | 2025-02-26 | 2025-03-05 |  |
| 15 | 4.3 | Design Tasks | 5d | 2025-03-05 | 2025-03-12 | 14 | 2025-03-05 | 2025-03-12 |  |
| 16 | 4.4 | Build Tasks | 5d | 2025-03-12 | 2025-03-19 | 15 | 2025-03-12 | 2025-03-19 |  |
| 17 | 4.5 | SYSTEMS REQUIREMENTS DOCUMENT ESTIMATE | 0d | 2025-03-06 | 2025-03-06 |  | 2025-03-13 | 2025-03-13 | start no earlier than 2025-03-06 |
| 18 | 4.6 | USER INTERFACE MOCKUPS ESTIMATE | 0d | 2025-03-13 | 2025-03-13 |  | 2025-03-13 | 2025-03-13 | start no earlier than 2025-03-13 |
| 19 | 5 | **Iteration 2: Develop Primary Timeline Graphic** | 15d | 2025-03-19 | 2025-04-09 | 12 | 2025-03-19 | 2025-04-09 |  |
| 20 | 5.1 | Planning Tasks | 1d | 2025-03-19 | 2025-03-20 |  | 2025-03-19 | 2025-03-20 |  |
| 21 | 5.2 | Analysis Tasks | 5d | 2025-03-19 | 2025-03-26 |  | 2025-03-19 | 2025-03-26 |  |
| 22 | 5.3 | Design Tasks | 5d | 2025-03-26 | 2025-04-02 | 21 | 2025-03-26 | 2025-04-02 |  |
| 23 | 5.4 | Build Tasks | 5d | 2025-04-02 | 2025-04-09 | 22 | 2025-04-02 | 2025-04-09 |  |
| 24 | 5.5 | UPDATED SYSTEM REQUIREMENTS DOC ESTIMATE | 0d | 2025-04-03 | 2025-04-03 |  |  |  | start no earlier than 2025-04-03 |

| ID | WBS | Task | Duration | Start | Finish | Predecessors | Baseline start | Baseline finish |
| --- | --- | --- | --- | --- | --- | --- | --- | --- |
| 25 | 6 | **Iteration 3: Develop Parallele Timeline Graphic** | 15d | 2025-04-09 | 2025-04-30 | 19 | 2025-04-09 | 2025-04-30 |
| 26 | 6.1 | Planning Tasks | 1d | 2025-04-09 | 2025-04-10 |  | 2025-04-09 | 2025-04-10 |
| 27 | 6.2 | Analysis Tasks | 5d | 2025-04-09 | 2025-04-16 |  | 2025-04-09 | 2025-04-16 |
| 28 | 6.3 | Design Tasks | 5d | 2025-04-16 | 2025-04-23 | 27 | 2025-04-16 | 2025-04-23 |
| 29 | 6.4 | Build Tasks | 5d | 2025-04-23 | 2025-04-30 | 28 | 2025-04-23 | 2025-04-30 |
| 30 | 7 | **Clean Up & Final Test** | 6d | 2025-04-30 | 2025-05-08 | 25 | 2025-04-30 | 2025-05-08 |
| 31 | 7.1 | Clean up code and documentation | 2d | 2025-04-30 | 2025-05-02 |  | 2025-04-30 | 2025-05-02 |
| 32 | 7.2 | Final Test | 4d | 2025-05-02 | 2025-05-08 | 31 | 2025-05-02 | 2025-05-08 |
| 33 | 7.3 | DELIVER FINAL PROJECT CODE | 0d | 2025-05-08 | 2025-05-08 | 32 | 2025-05-08 | 2025-05-08 |
